# PRD2018-G18-需求工程计划甘特图-新

Schedule from MS Project, 2018-09-28 to 2019-01-16, 1 hours a day.

## Calendars

- 标准: Mon-Fri 20:00-21:00; Sat-Sun 20:00-22:00.

## Resources

| Resource |
| --- |
| 陈妍蓝 |
| 陈遵义 |
| 宋翼虎 |
| 郑巧雁 |
| 张琪 |

## Schedule

| ID | WBS | Task | Type | Duration | Start | Finish | Predecessors | Resources | Work |
| --- | --- | --- | --- | --- | --- | --- | --- | --- | --- |
| 1 | 1 | **软件工程系列教学辅助网站** |  | 143d | 2018-09-28 20:00 | 2019-01-16 21:00 |  |  | 776h |
| 2 | 1.1 | **项目启动** |  | 13d | 2018-09-28 20:00 | 2018-10-07 21:00 |  | 陈遵义 | 96h |
| 3 | 1.1.1 | 项目任务书下达 | milestone, manual | 0h | 2018-09-28 20:00 | 2018-09-28 20:00 |  |  |  |
| 4 | 1.1.2 | 项目确定 | milestone, manual | 0h | 2018-09-28 20:00 | 2018-09-28 20:00 | 3 |  |  |
| 5 | 1.1.3 | logo设计 | manual | 1h | 2018-09-28 20:00 | 2018-09-28 21:00 | 4 | 陈妍蓝 | 1h |
| 6 | 1.1.4 | 项目所需软件 | manual | 5h | 2018-09-28 20:00 | 2018-09-30 22:00 |  | 宋翼虎 | 5h |
| 7 | 1.1.5 | **知识准备** |  | 62d | 2018-10-14 20:00 | 2018-12-01 21:00 | 4 | 宋翼虎 | 74h |
| 8 | 1.1.5.1 | UML概述PPT | manual | 2h | 2018-10-14 20:00 | 2018-10-14 22:00 |  | 宋翼虎 [70%]; 郑巧雁 [30%] | 2h |
| 9 | 1.1.5.2 | UML工具PPT | manual | 2h | 2018-10-20 20:00 | 2018-10-20 22:00 |  | 宋翼虎 | 2h |
| 10 | 1.1.5.3 | UML基础1 | manual | 2h | 2018-10-24 20:00 | 2018-10-25 21:00 |  | 陈遵义 [80%]; 宋翼虎 [20%] | 2h |
| 11 | 1.1.5.4 | UML基础2 | manual | 2h | 2018-11-03 20:00 | 2018-11-03 22:00 |  | 宋翼虎 | 2h |
| 12 | 1.1.5.5 | UML基础3 | manual | 2h | 2018-12-08 20:00 | 2018-12-08 22:00 |  | 宋翼虎 | 2h |
| 13 | 1.1.5.6 | UML基础4 | manual | 2h | 2018-12-15 20:00 | 2018-12-15 22:00 |  | 宋翼虎 | 2h |
| 14 | 1.1.6 | 项目章程 | milestone, manual | 1h | 2018-09-30 20:00 | 2018-09-30 21:00 | 4 | 郑巧雁 | 1h |
| 15 | 1.1.7 | 可行性分析v0.1.0 | milestone, manual | 1h | 2018-09-30 20:00 | 2018-09-30 21:00 | 4 | 郑巧雁; 张琪 | 2h |
| 16 | 1.2 | **项目计划** |  | 10d | 2018-09-30 20:00 | 2018-10-07 21:00 | 2 | 郑巧雁 | 17h |
| 17 | 1.2.1 | 项目开发计划v0.1.0 | milestone, manual | 1h | 2018-09-30 20:00 | 2018-09-30 21:00 | 2 | 陈妍蓝 | 1h |
| 18 | 1.2.2 | 需求工程计划v0.1.0 | milestone, manual | 1h | 2018-09-30 20:00 | 2018-09-30 21:00 | 2, 14 | 陈遵义 | 1h |
| 19 | 1.2.3 | 甘特图 | manual | 1h | 2018-09-30 20:00 | 2018-09-30 21:00 | 17, 18 | 陈妍蓝 | 1h |
| 20 | 1.2.4 | WBS表 | manual | 1h | 2018-09-30 21:00 | 2018-09-30 22:00 | 17, 18 | 陈妍蓝 | 1h |
| 21 | 1.2.5 | WBS图+OBS图 | manual | 2h | 2018-10-01 20:00 | 2018-10-02 21:00 | 20 | 宋翼虎 | 2h |
| 22 | 1.2.6 | QA计划v0.1.0 | milestone, manual | 1d | 2018-10-02 20:00 | 2018-10-02 21:00 | 2, 17, 18 | 郑巧雁 | 1h |
| 23 | 1.3 | **项目执行** |  | 137d | 2018-10-01 20:00 | 2019-01-15 21:00 | 2 | 陈妍蓝 | 514h |
| 24 | 1.3.1 | 可行性分析v0.2.0 | milestone, manual | 1h | 2018-10-01 20:00 | 2018-10-01 21:00 | 15 | 张琪 | 1h |
| 25 | 1.3.2 | 项目开发计划v0.2.0 | milestone, manual | 1h | 2018-10-03 20:00 | 2018-10-03 21:00 | 17 | 陈妍蓝 | 1h |
| 26 | 1.3.3 | 需求工程计划v0.1.1 | milestone, manual | 1h | 2018-10-04 20:00 | 2018-10-04 21:00 | 18 | 陈遵义 | 1h |

| ID | WBS | Task | Type | Duration | Start | Finish | Predecessors | Resources | Work |
| --- | --- | --- | --- | --- | --- | --- | --- | --- | --- |
| 27 | 1.3.4 | **需求获取活动** |  | 109h | 2018-10-07 20:00 | 2018-12-30 21:00 | 26 | 郑巧雁 | 126h |
| 28 | 1.3.4.1 | 编写项目视图与范围v0.1.0 | milestone, manual | 1h | 2018-10-06 20:00 | 2018-10-06 21:00 | 26 | 张琪 | 1h |
| 29 | 1.3.4.2 | 确定需求开发过程 | manual | 1h | 2018-10-07 20:00 | 2018-10-07 21:00 | 25, 26 | 陈妍蓝 | 1h |
| 30 | 1.3.4.3 | 用户群分类 | manual | 1h | 2018-10-15 20:00 | 2018-10-15 21:00 | 25, 26 | 陈遵义 | 1h |
| 31 | 1.3.4.4 | 需求工程计划v0.2.0 | milestone, manual | 1h | 2018-10-07 20:00 | 2018-10-07 21:00 | 26 | 陈遵义 | 1h |
| 32 | 1.3.4.5 | 项目视图与范围v0.2.0 | milestone, manual | 1h | 2018-10-07 20:00 | 2018-10-07 21:00 | 28 | 张琪 | 1h |
| 33 | 1.3.4.6 | 选择产品代表 | manual | 1h | 2018-11-30 20:00 | 2018-11-30 21:00 | 32 | 陈遵义 | 1h |
| 34 | 1.3.4.7 | 建立核心队伍 | milestone, manual | 0h | 2018-10-27 20:00 | 2018-10-27 20:00 | 33 | 陈妍蓝 |  |
| 35 | 1.3.4.8 | 需求工程计划v0.2.1 | manual | 1h | 2018-10-21 20:00 | 2018-10-21 21:00 | 31 | 陈遵义 | 1h |
| 36 | 1.3.4.9 | 与项目下达者进行第一次访谈-失败 | manual | 1d | 2018-10-30 20:00 | 2018-10-30 21:00 | 32 |  |  |
| 37 | 1.3.4.10 | 项目视图与范围0.3.0 | milestone, manual | 1h | 2018-10-31 20:00 | 2018-10-31 21:00 | 36 | 陈妍蓝 | 1h |
| 38 | 1.3.4.11 | 与项目下达者进行第一次访谈-成功 | manual | 1h | 2018-11-02 20:00 | 2018-11-02 21:00 | 37 |  |  |
| 39 | 1.3.4.12 | 需求工程计划v0.2.2 | milestone, manual | 1h | 2018-10-28 20:00 | 2018-10-28 21:00 | 35 | 陈遵义 | 1h |
| 40 | 1.3.4.13 | 需求工程计划v0.2.3 | milestone, manual | 1h | 2018-11-04 20:00 | 2018-11-04 21:00 | 39 | 陈遵义 | 1h |
| 41 | 1.3.4.14 | 需求工程计划v0.2.4 | milestone, manual | 1h | 2018-11-10 20:00 | 2018-11-10 21:00 | 40 | 陈遵义 | 1h |
| 42 | 1.3.4.15 | 需求工程计划v0.3.0 | milestone, manual | 1h | 2018-11-24 20:00 | 2018-11-24 21:00 | 41 | 陈遵义 | 1h |
| 43 | 1.3.4.16 | 与教师代表进行第一次访谈 | manual | 1h | 2018-12-07 20:00 | 2018-12-07 21:00 | 38 |  |  |
| 44 | 1.3.4.17 | 确定使用实例 | manual | 1h | 2018-12-08 20:00 | 2018-12-08 21:00 | 43 | 陈妍蓝 | 1h |
| 45 | 1.3.4.18 | 与教师代表进行第二次访谈 | manual | 1h | 2018-12-11 20:00 | 2018-12-11 21:00 | 43 |  |  |
| 46 | 1.3.4.19 | 与学生代表进行访谈 | manual | 1h | 2018-12-15 20:00 | 2018-12-15 21:00 | 44 |  |  |
| 47 | 1.3.4.20 | 与管理员代表进行访谈 | manual | 1h | 2018-12-16 20:00 | 2018-12-16 21:00 | 44 |  |  |
| 48 | 1.3.4.21 | 与教师代表进行第三次访谈 | manual | 1h | 2018-12-18 20:00 | 2018-12-18 21:00 | 45 |  |  |
| 49 | 1.3.4.22 | 与管理员代表进行第二次访谈 | manual | 1h | 2018-12-21 20:00 | 2018-12-21 21:00 | 47 |  |  |
| 50 | 1.3.4.23 | 与教师代表进行第四次访谈 | manual | 1h | 2018-12-21 20:00 | 2018-12-21 21:00 | 48 |  |  |
| 51 | 1.3.4.24 | 召开应用程序开发联系会议JAD | manual | 1h | 2018-12-25 20:00 | 2018-12-25 21:00 | 50 |  |  |
| 52 | 1.3.4.25 | 分析用户工作流程 | manual | 1h | 2018-12-21 20:00 | 2018-12-21 21:00 | 51 | 宋翼虎 | 1h |
| 53 | 1.3.4.26 | 确定质量属性 | manual | 1h | 2018-12-22 20:00 | 2018-12-22 21:00 | 52 | 郑巧雁 | 1h |
| 54 | 1.3.4.27 | 检查问题报告 | manual | 1h | 2018-12-22 21:00 | 2018-12-22 22:00 | 53 | 张琪 | 1h |
| 55 | 1.3.4.28 | 需求重用 | manual | 1d | 2018-12-23 20:00 | 2018-12-23 21:00 | 54 | 陈妍蓝 | 1h |

| ID | WBS | Task | Type | Duration | Start | Finish | Predecessors | Resources | Work |
| --- | --- | --- | --- | --- | --- | --- | --- | --- | --- |
| 56 | 1.3.5 | **需求分析** |  | 65d | 2018-11-09 20:00 | 2018-12-29 21:00 | 27 | 陈遵义 | 125h |
| 57 | 1.3.5.1 | 绘制关联图 | manual | 1h | 2018-11-30 20:00 | 2018-11-30 21:00 | 27 | 郑巧雁 | 1h |
| 58 | 1.3.5.2 | 绘制用例图 | manual | 11h | 2018-11-01 20:00 | 2018-11-09 21:00 | 44 | 陈遵义 | 11h |
| 59 | 1.3.5.3 | 绘制DM图 | manual | 11h | 2018-12-03 20:00 | 2018-12-11 21:00 | 58 | 陈遵义 [70%]; 宋翼虎 [30%] | 11h |
| 60 | 1.3.5.4 | 绘制顺序图 | manual | 6h | 2018-12-03 20:00 | 2018-12-08 21:00 | 58 | 宋翼虎 | 6h |
| 61 | 1.3.5.5 | 创建教师，学生的界面原型-WEB | manual | 9h | 2018-11-07 20:00 | 2018-11-13 21:00 | 44 | 陈妍蓝 | 9h |
| 62 | 1.3.5.6 | 创建教师，学生的界面原型-APP | manual | 15h | 2018-11-11 20:00 | 2018-11-22 21:00 | 44 | 陈遵义 | 15h |
| 63 | 1.3.5.7 | 需求工程计划 | milestone, manual | 2h | 2018-11-09 20:00 | 2018-11-10 21:00 | 42 | 陈妍蓝 | 2h |
| 64 | 1.3.5.8 | 分析可行性 | manual | 2h | 2018-11-11 21:00 | 2018-11-12 21:00 | 58, 59, 60 | 陈妍蓝 | 2h |
| 65 | 1.3.5.9 | 确定需求优先级 | manual | 1h | 2018-12-28 20:00 | 2018-12-28 21:00 | 44 | 郑巧雁 | 1h |
| 66 | 1.3.5.10 | 编写数据字典 | manual | 1h | 2018-11-13 20:00 | 2018-11-13 21:00 | 44, 64 | 张琪 | 1h |
| 67 | 1.3.5.11 | 应用质量功能调配 | manual | 1h | 2018-12-29 20:00 | 2018-12-29 21:00 | 65 | 郑巧雁 | 1h |
| 68 | 1.3.6 | **需求规格说明** |  | 40d | 2018-11-30 20:00 | 2018-12-30 21:00 | 56 | 张琪 | 49h |
| 69 | 1.3.6.1 | 采用软件需求规格说明模板 | manual | 1h | 2018-12-09 20:00 | 2018-12-09 21:00 | 56 | 郑巧雁 | 1h |
| 70 | 1.3.6.2 | 指明需求来源 | manual | 1h | 2018-12-10 20:00 | 2018-12-10 21:00 | 69 | 宋翼虎 | 1h |
| 71 | 1.3.6.3 | 为每一项需求注上标号 | manual | 1h | 2018-12-11 20:00 | 2018-12-11 21:00 | 70 | 张琪 | 1h |
| 72 | 1.3.6.4 | 记录业务规范 | manual | 1h | 2018-12-12 20:00 | 2018-12-12 21:00 | 71 | 陈遵义 | 1h |
| 73 | 1.3.6.5 | 创建需求跟踪能力矩阵 | manual | 1h | 2019-01-05 20:00 | 2019-01-05 21:00 | 72 | 陈妍蓝 | 1h |
| 74 | 1.3.6.6 | 需求规格说明书-初步 | milestone, manual | 2h | 2018-12-16 20:00 | 2018-12-16 22:00 | 56 | 张琪; 郑巧雁 | 4h |
| 75 | 1.3.7 | **需求规格审核** |  | 37h | 2018-12-02 20:00 | 2018-12-30 21:00 | 68 | 宋翼虎 | 47h |
| 76 | 1.3.7.1 | 审查需求文档 | manual | 2h | 2018-12-21 20:00 | 2018-12-22 21:00 | 74 | 陈妍蓝 | 2h |
| 77 | 1.3.7.2 | 编写测试用例 | manual | 4h | 2018-12-22 21:00 | 2018-12-24 21:00 | 76 | 张琪 [20%]; 郑巧雁 [60%]; 宋翼虎 [20%] | 4h |
| 78 | 1.3.7.3 | 编写用户手册 | manual | 3h | 2018-12-25 20:00 | 2018-12-27 21:00 | 77 | 张琪 | 3h |
| 79 | 1.3.7.4 | 确定合格的标准 | manual | 1h | 2018-12-28 20:00 | 2018-12-28 21:00 | 78 | 陈妍蓝 | 1h |

| ID | WBS | Task | Type | Duration | Start | Finish | Predecessors | Resources | Work |
| --- | --- | --- | --- | --- | --- | --- | --- | --- | --- |
| 80 | 1.3.8 | **需求管理过程** |  | 13d | 2019-01-06 20:00 | 2019-01-15 21:00 | 75 | 宋翼虎 | 27h |
| 81 | 1.3.8.1 | 确定变更控制过程 | manual | 1h | 2019-01-06 20:00 | 2019-01-06 21:00 | 74 | 陈妍蓝 | 1h |
| 82 | 1.3.8.2 | 建立变更控制委员会 | milestone, manual | 0h | 2019-01-07 20:00 | 2019-01-07 20:00 | 81 | 陈妍蓝 |  |
| 83 | 1.3.8.3 | CCB章程，变更申请报告 | manual | 1h | 2019-01-08 20:00 | 2019-01-08 21:00 | 82 | 张琪 | 1h |
| 84 | 1.3.8.4 | 进行变更影响分析 | manual | 1h | 2019-01-08 20:00 | 2019-01-08 21:00 | 82 | 陈妍蓝 | 1h |
| 85 | 1.3.8.5 | 跟踪每一项变更 | manual | 1h | 2019-01-06 20:00 | 2019-01-06 21:00 | 84 | 郑巧雁 | 1h |
| 86 | 1.3.8.6 | SRSv1.0.0 | milestone, manual | 1h | 2019-01-11 20:00 | 2019-01-11 21:00 | 74 | 郑巧雁 | 1h |
| 87 | 1.3.8.7 | 编写需求文档的基准版本和控制版本 | manual | 2h | 2019-01-11 20:00 | 2019-01-12 21:00 | 86 | 郑巧雁 | 2h |
| 88 | 1.3.8.8 | 维护变更历史记录 | manual | 1h | 2019-01-10 20:00 | 2019-01-10 21:00 | 87 | 郑巧雁 | 1h |
| 89 | 1.3.8.9 | 根据变更修改用例和图 | manual | 1h | 2019-01-10 20:00 | 2019-01-10 21:00 | 88 | 陈遵义 [20%]; 郑巧雁 [80%] | 1h |
| 90 | 1.3.8.10 | 根据变更修改测试用例和图 | manual | 1h | 2019-01-11 20:00 | 2019-01-11 21:00 | 88 | 宋翼虎 [20%]; 张琪 [80%] | 1h |
| 91 | 1.3.8.11 | 需求变更文档 | milestone, manual | 1h | 2019-01-12 20:00 | 2019-01-12 21:00 | 90 | 郑巧雁 | 1h |
| 92 | 1.3.8.12 | 衡量需求稳定性 | manual | 1h | 2019-01-13 20:00 | 2019-01-13 21:00 | 91 | 陈遵义 | 1h |
| 93 | 1.3.8.13 | SRSv1.0.1 | milestone, manual | 1h | 2019-01-13 20:00 | 2019-01-13 21:00 | 86 | 郑巧雁 | 1h |
| 94 | 1.3.8.14 | 使用需求管理工具 | manual | 1h | 2019-01-13 20:00 | 2019-01-13 21:00 | 92 | 陈妍蓝 | 1h |
| 95 | 1.4 | **概要设计** |  | 10h | 2019-01-06 20:00 | 2019-01-13 21:00 | 93 | 宋翼虎 | 16h |
| 96 | 1.4.1 | 系统设计与实现计划 | manual | 1h | 2019-01-06 20:00 | 2019-01-06 21:00 | 93 | 张琪 | 1h |
| 97 | 1.4.2 | 软件概要设计说明 | milestone, manual | 1h | 2019-01-13 20:00 | 2019-01-13 21:00 | 93, 96 | 宋翼虎 | 1h |
| 98 | 1.4.3 | 测试计划 | manual | 1h | 2019-01-13 20:00 | 2019-01-13 21:00 | 97 | 张琪 | 1h |
| 99 | 1.4.4 | 安装部署计划 | manual | 1h | 2019-01-13 20:00 | 2019-01-13 21:00 | 98 | 陈遵义 | 1h |
| 100 | 1.4.5 | 培训计划 | manual | 1h | 2019-01-13 20:00 | 2019-01-13 21:00 | 99 | 陈妍蓝 | 1h |
| 101 | 1.4.6 | 系统维护计划 | manual | 1h | 2019-01-13 20:00 | 2019-01-13 21:00 | 100 | 郑巧雁 | 1h |
| 102 | 1.5 | **项目收尾** |  | 5d | 2019-01-13 20:00 | 2019-01-16 21:00 | 23 | 陈妍蓝 | 9h |
| 103 | 1.5.1 | 编写项目总结报告 | milestone, manual | 1d | 2019-01-13 20:00 | 2019-01-13 21:00 | 16 | 陈妍蓝 | 1h |
| 104 | 1.5.2 | 项目质量验收 | manual | 1h | 2019-01-14 20:00 | 2019-01-14 21:00 | 103 | 陈遵义 | 1h |
| 105 | 1.5.3 | 项目文档整理 | manual | 2h | 2019-01-15 20:00 | 2019-01-16 21:00 | 104 | 陈妍蓝 | 2h |
| 106 | 1.5.4 | 项目交付 | milestone, manual | 0h | 2019-01-16 20:00 | 2019-01-16 20:00 | 105 | 陈妍蓝 |  |
| 107 | 1.5.5 | 举行项目结束会议 | milestone, manual | 0h | 2019-01-16 20:00 | 2019-01-16 20:00 | 106 | 陈妍蓝 |  |

| ID | WBS | Task | Type | Duration | Start | Finish | Resources | Work |
| --- | --- | --- | --- | --- | --- | --- | --- | --- |
| 108 | 1.6 | **项目控制** |  | 124d | 2018-09-28 20:00 | 2019-01-01 21:00 | 张琪 | 124h |
| 109 | 1.6.1 | **小组会议** |  | 142d | 2018-09-28 20:00 | 2019-01-15 21:00 |  |  |
| 110 | 1.6.1.1 | 第一次小组会议 | manual | 1h | 2018-09-28 20:00 | 2018-09-28 21:00 |  |  |
| 111 | 1.6.1.2 | 配置管理时间 | milestone, manual | 0h | 2018-09-29 20:00 | 2018-09-29 20:00 |  |  |
| 112 | 1.6.1.3 | 第二次小组会议 | manual | 1h | 2018-10-12 20:00 | 2018-10-12 21:00 |  |  |
| 113 | 1.6.1.4 | 第三次小组会议 | manual | 1h | 2018-10-19 20:00 | 2018-10-19 21:00 |  |  |
| 114 | 1.6.1.5 | 第四次小组会议 | manual | 1h | 2018-10-24 20:00 | 2018-10-24 21:00 |  |  |
| 115 | 1.6.1.6 | 第五次小组会议 | manual | 1h | 2018-11-02 20:00 | 2018-11-02 21:00 |  |  |
| 116 | 1.6.1.7 | 第六次小组会议 | milestone, manual | 0h | 2018-11-07 20:00 | 2018-11-07 20:00 |  |  |
| 117 | 1.6.1.8 | 第七次小组会议 | manual | 1h | 2018-11-09 20:00 | 2018-11-09 21:00 |  |  |
| 118 | 1.6.1.9 | 第八次小组会议 | manual | 1h | 2018-11-16 20:00 | 2018-11-16 21:00 |  |  |
| 119 | 1.6.1.10 | 第九次小组会议 | milestone, manual | 0h | 2018-11-21 20:00 | 2018-11-21 20:00 |  |  |
| 120 | 1.6.1.11 | 第十次小组会议 | manual | 1h | 2018-11-23 20:00 | 2018-11-23 21:00 |  |  |
| 121 | 1.6.1.12 | 第十一次小组会议 | manual | 1h | 2018-11-30 20:00 | 2018-11-30 21:00 |  |  |
| 122 | 1.6.1.13 | 第十二次小组会议 | manual | 1h | 2018-12-07 20:00 | 2018-12-07 21:00 |  |  |
| 123 | 1.6.1.14 | 第十三次小组会议 | manual | 1h | 2018-12-14 20:00 | 2018-12-14 21:00 |  |  |
| 124 | 1.6.1.15 | 第十四次小组会议 | milestone, manual | 0h | 2018-12-19 20:00 | 2018-12-19 20:00 |  |  |
| 125 | 1.6.1.16 | 第十五次小组会议 | manual | 1h | 2018-12-21 20:00 | 2018-12-21 21:00 |  |  |
| 126 | 1.6.1.17 | 第十六次小组会议 | milestone, manual | 0h | 2018-12-26 20:00 | 2018-12-26 20:00 |  |  |
| 127 | 1.6.1.18 | 第十七次小组会议 | manual | 1h | 2018-12-28 20:00 | 2018-12-28 21:00 |  |  |
| 128 | 1.6.1.19 | 第十八次小组会议-SRS组内评审 | manual | 1h | 2019-01-02 20:00 | 2019-01-02 21:00 |  |  |
| 129 | 1.6.1.20 | 第十九次小组会议-SRS课堂评审后任务分配 | manual | 1h | 2019-01-02 20:00 | 2019-01-02 21:00 |  |  |
| 130 | 1.6.1.21 | 第二十次小组会议 | manual | 1h | 2019-01-04 20:00 | 2019-01-04 21:00 |  |  |
| 131 | 1.6.1.22 | 第二十一次小组会议 | manual | 1h | 2019-01-11 20:00 | 2019-01-11 21:00 |  |  |
| 132 | 1.6.1.23 | 第二十二次小组会议 | manual | 1h | 2019-01-13 20:00 | 2019-01-13 21:00 |  |  |
| 133 | 1.6.1.24 | 第二十三次小组会议 | manual | 1h | 2019-01-15 20:00 | 2019-01-15 21:00 |  |  |
| 134 | 1.6.2 | 需求计划评审 | manual | 1h | 2018-11-09 20:00 | 2018-11-09 21:00 |  |  |
| 135 | 1.6.3 | SRS评审 | manual | 1h | 2019-01-02 20:00 | 2019-01-02 21:00 |  |  |
| 136 | 1.6.4 | 需求变更评审 | manual | 1h | 2019-01-11 20:00 | 2019-01-11 21:00 |  |  |
| 137 | 1.6.5 | 项目总评审 | manual | 1h | 2019-01-16 20:00 | 2019-01-16 21:00 |  |  |
